Schedule from MS Project, 2023-11-28 to 2024-03-08, costs in zł.

## Calendars

- Kalendarz 1: Mon off; Tue-Thu 09:00-13:00, 14:00-18:00; Fri 09:00-13:00; Sat off; Sun 10:00-18:00. Exceptions (off unless hours are given): 2024-01-06 to 2030-01-06 (Święto Trzech Króli, recurring).
- Kalendarz roznoszenia ulotek: Mon 10:00-13:00, 14:00-18:00; Tue-Fri 09:00-13:00, 14:00-18:00; Sat 09:00-14:00; Sun off. Exceptions (off unless hours are given): 2024-01-15 to 2030-01-17 09:00-10:00, 14:00-15:00 (Środa co dwa tygodnie, recurring), 2024-01-15 to 2030-01-28 09:00-12:00 (Niedziela co dwa tygodnie, recurring).

## Resources

| Resource | Unit | Rate |
| --- | --- | --- |
| Organizatorzy |  |  |
| Wolontariusze |  |  |
| Zespół odpowiedzialny za zbiórkę internetową |  |  |
| Zlecenie zaprojektowania i wykonania reklam internetowych |  |  |
| Dystrybucja reklam przez GoogleAds |  |  |
| Zlecenie stworzenia spotu |  |  |
| Dystrybucja przez telewizje |  |  |
| Występ zespołu |  |  |
| Ochrona koncertu |  |  |
| Obsługa techniczna koncertu |  |  |
| Zlecenie zaprojektowania ulotek |  |  |
| Wydruk ulotek i plakatów |  |  |
| Ulotki | komplet | 200 |
| Plakaty | komplet | 150 |

## Schedule

| ID | WBS | Task | Duration | Start | Finish | Predecessors | Total slack | Free slack | Resources | Work | Cost |
| --- | --- | --- | --- | --- | --- | --- | --- | --- | --- | --- | --- |
| 1 | 1 | **Stworzenie zbiórki internetowej** | 18.32d? | 2023-11-28 | 2023-12-26 |  | 0d |  |  | 294.35h |  |
| 2 | 1.1 | **Wybór zespołu odpowiedzialnego za zbiórkę internetową** | 14.99d? | 2023-11-28 | 2023-12-20 |  | 0d |  |  | 251.89h |  |
| 3 | 1.1.1 | Zebranie chętnych kandydatów | 15d? | 2023-11-28 | 2023-12-18 |  | 0d |  | Organizatorzy | 120h |  |
| 4 | 1.1.2 | Przeprowadzenie rozmów | 16.33d? | 2023-11-28 | 2023-12-20 | 3SS | 0d |  | Organizatorzy | 130.64h |  |
| 5 | 1.1.3 | Wybór najlepszych kandydatów | 1.25h? | 2023-12-20 | 2023-12-20 | 4 | 0d |  | Organizatorzy | 1.25h |  |
| 6 | 1.2 | **Wybór portalu, na którym odbędzie się zbiórka** | 0.79d? | 2023-12-20 | 2023-12-21 |  | 50.99d |  |  | 9.32h |  |
| 7 | 1.2.1 | Przeprowadzenie research'u przez wybrany zespół | 4.16h? | 2023-12-20 | 2023-12-21 | 5 | 52.99d | 0d | Zespół odpowiedzialny za zbiórkę internetową | 4.16h |  |
| 8 | 1.2.2 | Kontakt z administracją stron | 1.5h? | 2023-12-20 | 2023-12-20 | 7SS | 53.33d | 0d | Zespół odpowiedzialny za zbiórkę internetową | 1.5h |  |
| 9 | 1.2.3 | Ustalenie warunków przeprowadzania zbiórki | 3.66h? | 2023-12-20 | 2023-12-20 | 8FF | 53.33d |  | Zespół odpowiedzialny za zbiórkę internetową | 3.66h |  |
| 10 | 1.3 | **Monitorowanie przebiegu zbiórki internetowej** | 3.33d? | 2023-12-20 | 2023-12-26 |  | 48.01d |  |  | 33.14h |  |
| 11 | 1.3.1 | Ustalenie odpowiedzialności w zespole zarządzającym | 2.5h? | 2023-12-20 | 2023-12-20 | 5 | 49.43d | 0d | Organizatorzy | 2.5h |  |
| 12 | 1.3.2 | Organizacja systemu księgowania wpłat | 3.83d? | 2023-12-20 | 2023-12-26 | 11SS | 49.43d |  | Zespół odpowiedzialny za zbiórkę internetową | 30.64h |  |
| 13 | 2 | **Przeprowanienie promocji zbiórki** | 51.51d? | 2023-12-20 | 2024-03-08 |  | 0d |  |  | 790h | 7,000 |
| 14 | 2.1 | **Organizajca reklam przeglądarkowych** | 10.51d? | 2023-12-20 | 2024-01-04 |  | 41d |  |  | 88h |  |
| 15 | 2.1.1 | Wybór konceptu kampanii reklamowej | 3d? | 2023-12-20 | 2023-12-25 | 5 | 41.75d | 0d | Organizatorzy | 24h |  |
| 16 | 2.1.2 | Outsourcingowe zlecenie zaprojektowania i wykonania grafik | 1d? | 2023-12-25 | 2023-12-26 | 15 | 41.75d | 0d | Organizatorzy; Zlecenie zaprojektowania i wykonania reklam internetowych [0.1%] | 8h |  |
| 17 | 2.1.3 | Dystrybucja reklamy poprzez system GoogleAds | 7d? | 2023-12-26 | 2024-01-04 | 16 | 41.75d |  | Dystrybucja reklam przez GoogleAds; Organizatorzy | 56h |  |
| 18 | 2.2 | **Organizacja spotu promującego zbiórkę** | 13.01d? | 2023-12-20 | 2024-01-09 |  | 38.5d |  |  | 116h |  |
| 19 | 2.2.1 | Wybór konceptu kampanii reklamowej | 3d? | 2023-12-20 | 2023-12-25 | 5 | 38.25d | 0d | Organizatorzy | 24h |  |
| 20 | 2.2.2 | Outsourcingowe zlecenie stworzenia spotu | 1.5d? | 2023-12-25 | 2023-12-26 | 19 | 38.25d | 0d | Organizatorzy; Zlecenie stworzenia spotu [0.1%] | 12h |  |
| 21 | 2.2.3 | Dystrybucja reklamy poprzez telewizje | 10d? | 2023-12-27 | 2024-01-09 | 20 | 39d |  | Organizatorzy; Dystrybucja przez telewizje [0.1%] | 80h |  |
| 22 | 2.3 | **Organizacja koncertu** | 20.51d? | 2024-02-06 | 2024-03-08 |  | 0d |  |  | 258h |  |
| 23 | 2.3.1 | **Wybór zespołu** | 8.01d? | 2024-02-06 | 2024-02-19 |  | 0d |  |  | 72h |  |
| 24 | 2.3.1.1 | Kontakt z występującym zespołem | 4d? | 2024-02-06 | 2024-02-12 | 5FS+31d | 0d |  | Organizatorzy | 32h |  |
| 25 | 2.3.1.2 | Uzgodnienie warunków występu | 5d? | 2024-02-12 | 2024-02-19 | 24 | 0d |  | Organizatorzy; Występ zespołu | 40h |  |

| ID | WBS | Task | Type | Duration | Start | Finish | Predecessors | Total slack | Free slack | Calendar | Resources | Work | Cost |
| --- | --- | --- | --- | --- | --- | --- | --- | --- | --- | --- | --- | --- | --- |
| 26 | 2.3.2 | **Zapewnienie standardów bezpieczeństwa uczestnikom** |  | 9d? | 2024-02-19 | 2024-03-04 |  | 0d |  |  |  | 80h |  |
| 27 | 2.3.2.1 | Dobór ochrony |  | 10d? | 2024-02-19 | 2024-03-04 | 25 | 0d |  |  | Organizatorzy; Ochrona koncertu [0.1%] | 80h |  |
| 28 | 2.3.3 | Zapewnienie obsługi koncertu |  | 10d? | 2024-02-19 | 2024-03-04 | 25 | 0d |  |  | Organizatorzy; Obsługa techniczna koncertu [0.1%] | 80h |  |
| 29 | 2.3.4 | Podanie informacji o sponsorach |  | 2h? | 2024-03-04 | 2024-03-05 | 27, 28 | 0d |  |  | Organizatorzy | 2h |  |
| 30 | 2.3.5 | Przeprowadzenia akcji promocyjnych w trakcie koncertu |  | 3d? | 2024-03-05 | 2024-03-08 | 29, 49 | 0d |  |  | Wolontariusze | 24h |  |
| 31 | 2.4 | **Przygotowanie ulotek i plakatów** |  | 29.01d? | 2023-12-20 | 2024-02-03 |  | 22.5d |  |  |  | 328h | 7,000 |
| 32 | 2.4.1 | Wybór konceptu kampanii reklamowej |  | 3d? | 2023-12-20 | 2023-12-25 | 5 | 45d | 0d |  | Organizatorzy | 24h |  |
| 33 | 2.4.2 | Outsourcingowe zlecenie zaprojektowania i wykonania grafik |  | 5d? | 2023-12-25 | 2024-01-01 | 32 | 45d | 0d |  | Organizatorzy; Zlecenie zaprojektowania ulotek [0.1%] | 40h |  |
| 34 | 2.4.3 | Wydruk ulotek i plakatów |  | 2d? | 2023-12-28 | 2024-01-01 | 33FF | 45d |  |  | Wydruk ulotek i plakatów [0.1%]; Organizatorzy | 16h |  |
| 35 | 2.4.4 | **Dystrybucja ulotek i plakatów** |  | 25d? | 2023-12-27 | 2024-02-03 |  | 22.5d |  |  |  | 248h | 7,000 |
| 36 | 2.4.4.1 | **Staranie się o zgodę władz lokalnych na umieszczenie plakatów w miejscach publicznych** |  | 4.5d? | 2023-12-27 | 2024-01-02 |  | 30.5d |  |  |  | 40h |  |
| 37 | 2.4.4.1.1 | Przydział osób odpowiedzialnych z podziałem na powiaty |  | 5d? | 2023-12-27 | 2024-01-02 | 5, 45 | 31.75d | 0d |  | Organizatorzy | 40h |  |
| 38 | 2.4.4.2 | Organizacja osób roznoszących ulotki |  | 12d? | 2024-01-03 | 2024-01-20 | 45, 49, 50 | 36.49d |  | Kalendarz roznoszenia ulotek | Wolontariusze; Ulotki [20 komplet] | 96h | 4,000 |
| 39 | 2.4.4.3 | Organizacja osób rozwieszających plakaty |  | 14d? | 2024-01-16 | 2024-02-03 | 24SS-14d, 45, 49, 50 | 22.01d |  |  | Wolontariusze; Plakaty [20 komplet] | 112h | 3,000 |
| 40 | 3 | **Organizacja osób zaangażowanych** |  | 21d? | 2023-11-28 | 2023-12-28 |  | 30.5d |  |  |  | 352h |  |
| 41 | 3.1 | Wybór koordynatorów wojewódzkich |  | 7d? | 2023-11-28 | 2023-12-06 | 3SS | 31.75d | 0d |  | Organizatorzy | 56h |  |
| 42 | 3.2 | **Organizacja wolontariuszy** |  | 12.5d? | 2023-12-07 | 2023-12-26 |  | 30.49d |  |  |  | 168h |  |
| 43 | 3.2.1 | Kontakt ze szkołami i uczelniami |  | 10d? | 2023-12-07 | 2023-12-20 | 41 | 31.75d | 0d |  | Organizatorzy | 80h |  |
| 44 | 3.2.2 | Kontakt z wolontariatami i organizacjami charytatywnymi |  | 7d? | 2023-12-07 | 2023-12-15 | 41 | 34.75d | 3d |  | Organizatorzy | 56h |  |
| 45 | 3.2.3 | Przeprowadzenie zapisu chętnych do wolontariatu |  | 4d? | 2023-12-21 | 2023-12-26 | 43, 44 | 31.75d | 0d |  | Organizatorzy | 32h |  |
| 46 | 3.3 | **Organizacja sponsorów** |  | 14.5d? | 2023-12-07 | 2023-12-28 |  | 33d |  |  |  | 128h |  |
| 47 | 3.3.1 | Kontakt z przesiębiostwami i indywidualnymi osobami |  | 12d? | 2023-12-07 | 2023-12-22 | 41 | 34.75d | 1d |  | Organizatorzy | 96h |  |
| 48 | 3.3.2 | Wpisanie chętnych na listę sponsorów |  | 4d? | 2023-12-25 | 2023-12-28 | 47 | 33.75d | 0d |  | Organizatorzy | 32h |  |
| 49 | 4 | Zebranie wolontariuszy | milestone | 0d | 2023-12-28 | 2023-12-28 | 48 | 34.75d | 3d |  |  |  |  |
| 50 | 5 | Uzyskanie zgody na umieszczenie plakatów | milestone | 0d | 2024-01-02 | 2024-01-02 | 37 | 31.75d | 0d |  |  |  |  |
| 51 | 6 | Pomyślne przeprowadzenie koncertu | milestone | 0d | 2024-03-08 | 2024-03-08 | 30 | 0d |  |  |  |  |  |
